# Spring Testing Schedule

Schedule from ProjectLibre, 2026-10-21 to 2027-04-27.

## Calendars

- Standard: Mon-Fri 08:00-12:00, 13:00-17:00; Sat-Sun off. Exceptions (off unless hours are given): 2026-11-22 to 2026-11-27, 2026-12-07 to 2027-01-06.

## Resources

| Resource |
| --- |
| Unassigned |

## Schedule

| ID | WBS | Task | Type | Duration | Start | Finish | Predecessors | Baseline start | Baseline finish | Baseline 1 start | Baseline 1 finish | Constraint | Deadline |
| --- | --- | --- | --- | --- | --- | --- | --- | --- | --- | --- | --- | --- | --- |
| 1 | 1 | **Project Complete** |  | 98d | 2026-10-21 | 2027-04-13 |  | 2026-10-21 | 2027-04-12 | 2026-10-21 | 2027-04-13 |  |  |
| 2 | 1.1 | **Testing Design Complete** |  | 43d | 2026-10-21 | 2027-01-26 |  | 2026-10-21 | 2027-01-26 | 2026-10-21 | 2027-01-26 |  |  |
| 4 | 1.1.1 | **Testing Plans** |  | 13d | 2026-10-21 | 2026-11-06 |  | 2026-10-21 | 2026-11-06 | 2026-10-21 | 2026-11-06 |  | 2026-11-06 |
| 5 | 1.1.1.1 | Magnetometer Test Plan |  | 13d | 2026-10-21 | 2026-11-06 |  | 2026-10-21 | 2026-11-06 | 2026-10-21 | 2026-11-06 |  |  |
| 6 | 1.1.1.2 | Instrument Test Plan |  | 13d | 2026-10-21 | 2026-11-06 |  | 2026-10-21 | 2026-11-06 | 2026-10-21 | 2026-11-06 |  |  |
| 7 | 1.1.1.3 | Link Test Plan |  | 13d | 2026-10-21 | 2026-11-06 |  | 2026-10-21 | 2026-11-06 | 2026-10-21 | 2026-11-06 |  |  |
| 8 | 1.1.1.4 | Flatsat Test Plan |  | 13d | 2026-10-21 | 2026-11-06 |  | 2026-10-21 | 2026-11-06 | 2026-10-21 | 2026-11-06 |  |  |
| 9 | 1.1.1.5 | Full Bill of Materials |  | 13d | 2026-10-21 | 2026-11-06 |  | 2026-10-21 | 2026-11-06 | 2026-10-21 | 2026-11-06 |  |  |
| 11 | 1.1.2 | DR 2, Session 1 |  | 0d | 2026-11-09 | 2026-11-09 |  | 2026-11-09 | 2026-11-09 | 2026-11-09 | 2026-11-09 | start no earlier than 2026-11-09 |  |
| 13 | 1.1.3 | DR 2, Session 2 | milestone | 0d | 2026-11-16 | 2026-11-16 | 4 | 2026-11-16 | 2026-11-16 | 2026-11-16 | 2026-11-16 | start no earlier than 2026-11-16 |  |
| 15 | 1.1.2 | **Manufacturing Plans** |  | 8d | 2026-11-09 | 2026-11-18 |  | 2026-11-09 | 2026-11-18 | 2026-11-09 | 2026-11-18 |  | 2026-11-18 |
| 16 | 1.1.2.1 | Magnetometer Manufacturing Plan |  | 8d | 2026-11-09 | 2026-11-18 | 5 | 2026-11-09 | 2026-11-18 | 2026-11-09 | 2026-11-18 |  |  |
| 17 | 1.1.2.2 | Instrument Manufacturing Plan |  | 8d | 2026-11-09 | 2026-11-18 | 6 | 2026-11-09 | 2026-11-18 | 2026-11-09 | 2026-11-18 |  |  |
| 18 | 1.1.2.3 | Link Manufacturing Plan |  | 8d | 2026-11-09 | 2026-11-18 | 7 | 2026-11-09 | 2026-11-18 | 2026-11-09 | 2026-11-18 |  |  |
| 19 | 1.1.2.4 | Flatsat Manufacturing Plan |  | 8d | 2026-11-09 | 2026-11-18 | 8 | 2026-11-09 | 2026-11-18 | 2026-11-09 | 2026-11-18 |  |  |
| 21 | 1.1.3 | **Software Development** |  | 30d | 2026-11-09 | 2027-01-26 |  | 2026-11-09 | 2027-01-26 | 2026-11-09 | 2027-01-26 |  |  |
| 22 | 1.1.3.1 | Instrument Algorithms |  | 30d | 2026-11-09 | 2027-01-26 | 6 | 2026-11-09 | 2027-01-26 | 2026-11-09 | 2027-01-26 |  |  |
| 23 | 1.1.3.2 | CDH Algorithms |  | 30d | 2026-11-09 | 2027-01-26 | 8 | 2026-11-09 | 2027-01-26 | 2026-11-09 | 2027-01-26 |  |  |
| 24 | 1.1.3.3 | Power Algorithms |  | 25d | 2026-11-09 | 2027-01-19 | 8 | 2026-11-09 | 2027-01-26 | 2026-11-09 | 2027-01-19 |  |  |
| 25 | 1.1.3.4 | GNC Algorithms |  | 25d | 2026-11-09 | 2027-01-19 | 5 | 2026-11-09 | 2027-01-26 | 2026-11-09 | 2027-01-19 |  |  |
| 26 | 1.1.3.5 | Comms Algorithms |  | 30d | 2026-11-09 | 2027-01-26 | 7 | 2026-11-09 | 2027-01-26 | 2026-11-09 | 2027-01-26 |  |  |
| 28 | 1.2 | **Procurement** |  | 28d | 2026-11-19 | 2027-02-03 | 15 | 2026-11-19 | 2027-02-03 | 2026-11-19 | 2027-02-03 |  |  |
| 29 | 1.2.1 | **Magnetometer** |  | 15d | 2026-11-19 | 2027-01-15 | 16 | 2026-11-19 | 2027-01-15 | 2026-11-19 | 2027-01-15 |  |  |
| 30 | 1.2.1.1 | Magnetometer |  | 10d | 2026-11-19 | 2027-01-08 |  | 2026-11-19 | 2027-01-08 | 2026-11-19 | 2027-01-08 |  |  |
| 31 | 1.2.1.2 | Wiring |  | 5d | 2026-11-19 | 2026-12-02 |  | 2026-11-19 | 2026-12-02 | 2026-11-19 | 2026-12-02 |  |  |
| 32 | 1.2.1.3 | Arduino |  | 10d | 2026-11-19 | 2027-01-08 |  | 2026-11-19 | 2027-01-08 | 2026-11-19 | 2027-01-08 |  |  |
| 33 | 1.2.1.4 | Wood for Test Stand |  | 5d | 2026-11-19 | 2026-12-02 |  | 2026-11-19 | 2026-12-02 | 2026-11-19 | 2026-12-02 |  |  |
| 34 | 1.2.1.5 | DB9 to USB Cable |  | 2d | 2026-11-19 | 2026-11-20 |  | 2026-11-19 | 2026-11-20 | 2026-11-19 | 2026-11-20 |  |  |
| 35 | 1.2.1.6 | Additional Power Supply |  | 15d | 2026-11-19 | 2027-01-15 |  | 2026-11-19 | 2027-01-15 | 2026-11-19 | 2027-01-15 |  |  |

| ID | WBS | Task | Duration | Start | Finish | Predecessors | Baseline start | Baseline finish | Baseline 1 start | Baseline 1 finish |
| --- | --- | --- | --- | --- | --- | --- | --- | --- | --- | --- |
| 37 | 1.2.2 | **Instrument** | 28d | 2026-11-19 | 2027-02-03 | 17 | 2026-11-19 | 2027-02-03 | 2026-11-19 | 2027-02-03 |
| 38 | 1.2.2.1 | Event Camera | 28d | 2026-11-19 | 2027-02-03 |  | 2026-11-19 | 2027-02-03 | 2026-11-19 | 2027-02-03 |
| 39 | 1.2.2.2 | Lens | 7d | 2026-11-19 | 2026-12-04 |  | 2026-11-19 | 2026-12-04 | 2026-11-19 | 2026-12-04 |
| 40 | 1.2.2.3 | Camera Tripod | 5d | 2026-11-19 | 2026-12-02 |  | 2026-11-19 | 2026-12-02 | 2026-11-19 | 2026-12-02 |
| 41 | 1.2.2.4 | Standard Camera | 5d | 2026-11-19 | 2026-12-02 |  | 2026-11-19 | 2026-12-02 | 2026-11-19 | 2026-12-02 |
| 42 | 1.2.2.5 | Tarp | 5d | 2026-11-19 | 2026-12-02 |  | 2026-11-19 | 2026-12-02 | 2026-11-19 | 2026-12-02 |
| 43 | 1.2.2.6 | Event Software | 10d | 2026-11-19 | 2027-01-08 |  | 2026-11-19 | 2027-01-08 | 2026-11-19 | 2027-01-08 |
| 44 | 1.2.2.7 | Lighting | 5d | 2026-11-19 | 2026-12-02 |  | 2026-11-19 | 2026-12-02 | 2026-11-19 | 2026-12-02 |
| 45 | 1.2.2.8 | LED | 5d | 2026-11-19 | 2026-12-02 |  | 2026-11-19 | 2026-12-02 | 2026-11-19 | 2026-12-02 |
| 46 | 1.2.2.9 | Arduino | 10d | 2026-11-19 | 2027-01-08 |  | 2026-11-19 | 2027-01-08 | 2026-11-19 | 2027-01-08 |
| 47 | 1.2.2.10 | IMU | 10d | 2026-11-19 | 2027-01-08 |  | 2026-11-19 | 2027-01-08 | 2026-11-19 | 2027-01-08 |
| 48 | 1.2.2.11 | Nerf Gun and Darts | 10d | 2026-11-19 | 2027-01-08 |  | 2026-11-19 | 2027-01-08 | 2026-11-19 | 2027-01-08 |
| 49 | 1.2.2.12 | Misc Electronics | 5d | 2026-11-19 | 2026-12-02 |  | 2026-11-19 | 2026-12-02 | 2026-11-19 | 2026-12-02 |
| 51 | 1.2.3 | **Link** | 10d | 2026-11-19 | 2027-01-08 | 18 | 2026-11-19 | 2027-01-08 | 2026-11-19 | 2027-01-08 |
| 52 | 1.2.3.1 | Lime SDR Mini | 10d | 2026-11-19 | 2027-01-08 |  | 2026-11-19 | 2027-01-08 | 2026-11-19 | 2027-01-08 |
| 53 | 1.2.3.2 | 2X2 Patch Array | 10d | 2026-11-19 | 2027-01-08 |  | 2026-11-19 | 2027-01-08 | 2026-11-19 | 2027-01-08 |
| 54 | 1.2.3.3 | Dipole | 10d | 2026-11-19 | 2027-01-08 |  | 2026-11-19 | 2027-01-08 | 2026-11-19 | 2027-01-08 |
| 55 | 1.2.3.4 | Computer | 10d | 2026-11-19 | 2027-01-08 |  | 2026-11-19 | 2027-01-08 | 2026-11-19 | 2027-01-08 |
| 57 | 1.2.4 | **Flatsat** | 15d | 2026-11-19 | 2027-01-15 | 19 | 2026-11-19 | 2027-01-15 | 2026-11-19 | 2027-01-15 |
| 58 | 1.2.4.1 | Aluminum Plate | 15d | 2026-11-19 | 2027-01-15 |  | 2026-11-19 | 2027-01-15 | 2026-11-19 | 2027-01-15 |
| 59 | 1.2.4.2 | Cables | 5d | 2026-11-19 | 2026-12-02 |  | 2026-11-19 | 2026-12-02 | 2026-11-19 | 2026-12-02 |
| 60 | 1.2.4.3 | PCBs | 15d | 2026-11-19 | 2027-01-15 |  | 2026-11-19 | 2027-01-15 | 2026-11-19 | 2027-01-15 |
| 61 | 1.2.4.4 | CDH Computer | 5d | 2026-11-19 | 2026-12-02 |  | 2026-11-19 | 2026-12-02 | 2026-11-19 | 2026-12-02 |
| 62 | 1.2.4.5 | Structure Materials | 5d | 2026-11-19 | 2026-12-02 |  | 2026-11-19 | 2026-12-02 | 2026-11-19 | 2026-12-02 |
| 63 | 1.2.4.6 | Harnesses | 5d | 2026-11-19 | 2026-12-02 |  | 2026-11-19 | 2026-12-02 | 2026-11-19 | 2026-12-02 |
| 64 | 1.2.4.7 | Power Supply | 15d | 2026-11-19 | 2027-01-15 |  | 2026-11-19 | 2027-01-15 | 2026-11-19 | 2027-01-15 |

| ID | WBS | Task | Duration | Start | Finish | Predecessors | Baseline start | Baseline finish | Baseline 1 start | Baseline 1 finish |
| --- | --- | --- | --- | --- | --- | --- | --- | --- | --- | --- |
| 66 | 1.3 | **Fabrication** | 25d | 2027-01-11 | 2027-02-12 |  | 2027-01-11 | 2027-02-12 | 2027-01-11 | 2027-02-12 |
| 67 | 1.3.1 | **Magnetometer** | 7d | 2027-01-18 | 2027-01-26 | 29 | 2027-01-18 | 2027-01-26 | 2027-01-18 | 2027-01-26 |
| 68 | 1.3.1.1 | Magnetometer Test Stand | 7d | 2027-01-18 | 2027-01-26 |  | 2027-01-18 | 2027-01-26 | 2027-01-18 | 2027-01-26 |
| 70 | 1.3.2 | **Instrument** | 7d | 2027-02-04 | 2027-02-12 | 37 | 2027-02-04 | 2027-02-12 | 2027-02-04 | 2027-02-12 |
| 71 | 1.3.2.1 | Event Camera Stand | 5d | 2027-02-04 | 2027-02-10 |  | 2027-02-04 | 2027-02-10 | 2027-02-04 | 2027-02-10 |
| 72 | 1.3.2.2 | Moving Light Source Setup | 7d | 2027-02-04 | 2027-02-12 |  | 2027-02-04 | 2027-02-12 | 2027-02-04 | 2027-02-12 |
| 74 | 1.3.3 | **Link** | 7d | 2027-01-11 | 2027-01-19 | 51 | 2027-01-11 | 2027-01-19 | 2027-01-11 | 2027-01-19 |
| 75 | 1.3.3.1 | Antenna | 7d | 2027-01-11 | 2027-01-19 |  | 2027-01-11 | 2027-01-19 | 2027-01-11 | 2027-01-19 |
| 77 | 1.3.4 | **Flatsat** | 10d | 2027-01-18 | 2027-01-29 | 57 | 2027-01-18 | 2027-01-29 | 2027-01-18 | 2027-01-29 |
| 78 | 1.3.4.1 | Enclosure | 10d | 2027-01-18 | 2027-01-29 |  | 2027-01-18 | 2027-01-29 | 2027-01-18 | 2027-01-29 |
| 79 | 1.3.4.2 | Elecronics Assembly | 7d | 2027-01-18 | 2027-01-26 |  | 2027-01-18 | 2027-01-26 | 2027-01-18 | 2027-01-26 |
| 81 | 1.4 | **Component Testing** | 25d | 2026-12-03 | 2027-02-05 |  | 2026-12-03 | 2027-02-05 | 2026-12-03 | 2027-02-05 |
| 82 | 1.4.1 | **Magnetometer** | 7d | 2027-01-11 | 2027-01-19 |  | 2027-01-11 | 2027-01-19 | 2027-01-11 | 2027-01-19 |
| 83 | 1.4.1.1 | Inspect Magnetometer | 2d | 2027-01-11 | 2027-01-12 | 30 | 2027-01-11 | 2027-01-12 | 2027-01-11 | 2027-01-12 |
| 84 | 1.4.1.2 | Inspect Power Supply | 2d | 2027-01-18 | 2027-01-19 | 35 | 2027-01-18 | 2027-01-19 | 2027-01-18 | 2027-01-19 |
| 85 | 1.4.1.3 | Inspect other electronics | 2d | 2027-01-11 | 2027-01-12 | 31, 32, 34 | 2027-01-11 | 2027-01-12 | 2027-01-11 | 2027-01-12 |
| 87 | 1.4.2 | **Instrument** | 25d | 2026-12-03 | 2027-02-05 |  | 2026-12-03 | 2027-02-05 | 2026-12-03 | 2027-02-05 |
| 88 | 1.4.2.1 | Inpect Event Camera | 2d | 2027-02-04 | 2027-02-05 | 38 | 2027-02-04 | 2027-02-05 | 2027-02-04 | 2027-02-05 |
| 89 | 1.4.2.2 | Verify Event Camera works with software / laptop | 2d | 2027-01-11 | 2027-01-12 | 43 | 2027-01-11 | 2027-01-12 | 2027-01-11 | 2027-01-12 |
| 90 | 1.4.2.3 | Inspect Lens | 2d | 2026-12-07 | 2027-01-07 | 39 | 2026-12-07 | 2027-01-07 | 2026-12-07 | 2027-01-07 |
| 91 | 1.4.2.4 | Inspect other electronics | 2d | 2026-12-03 | 2026-12-04 | 44, 45, 49 | 2026-12-03 | 2026-12-04 | 2026-12-03 | 2026-12-04 |
| 92 | 1.4.2.5 | Inspect Arduino | 2d | 2027-01-11 | 2027-01-12 | 46 | 2027-01-11 | 2027-01-12 | 2027-01-11 | 2027-01-12 |
| 93 | 1.4.2.6 | Inspect IMU | 2d | 2027-01-11 | 2027-01-12 | 47 | 2027-01-11 | 2027-01-12 | 2027-01-11 | 2027-01-12 |
| 95 | 1.4.3 | **Link** | 9d | 2027-01-11 | 2027-01-21 |  | 2027-01-11 | 2027-01-21 | 2027-01-11 | 2027-01-21 |
| 96 | 1.4.3.1 | Inspect SDR Mini | 2d | 2027-01-11 | 2027-01-12 | 52 | 2027-01-11 | 2027-01-12 | 2027-01-11 | 2027-01-12 |
| 97 | 1.4.3.2 | Inspect Patch Array | 2d | 2027-01-11 | 2027-01-12 | 53 | 2027-01-11 | 2027-01-12 | 2027-01-11 | 2027-01-12 |
| 98 | 1.4.3.3 | Inspect Fabricated Antenna | 2d | 2027-01-20 | 2027-01-21 | 75 | 2027-01-20 | 2027-01-21 | 2027-01-20 | 2027-01-21 |
| 99 | 1.4.3.4 | Inspect Dipole | 2d | 2027-01-11 | 2027-01-12 | 54 | 2027-01-11 | 2027-01-12 | 2027-01-11 | 2027-01-12 |

| ID | WBS | Task | Duration | Start | Finish | Predecessors | Baseline start | Baseline finish | Baseline 1 start | Baseline 1 finish | Constraint |
| --- | --- | --- | --- | --- | --- | --- | --- | --- | --- | --- | --- |
| 101 | 1.4.4 | **Flatsat** | 12d | 2026-12-03 | 2027-01-19 |  | 2026-12-03 | 2027-01-19 | 2026-12-03 | 2027-01-19 |  |
| 102 | 1.4.4.1 | Inspect PCB and verify functionality | 2d | 2027-01-18 | 2027-01-19 | 60 | 2027-01-18 | 2027-01-19 | 2027-01-18 | 2027-01-19 |  |
| 103 | 1.4.4.2 | Inspect CDH computer | 2d | 2026-12-03 | 2026-12-04 | 61 | 2026-12-03 | 2026-12-04 | 2026-12-03 | 2026-12-04 |  |
| 104 | 1.4.4.3 | Inspect Power Supply | 2d | 2027-01-18 | 2027-01-19 | 64 | 2027-01-18 | 2027-01-19 | 2027-01-18 | 2027-01-19 |  |
| 106 | 1.5 | **Subsystem Integration** | 28d | 2027-01-20 | 2027-02-26 |  | 2027-01-20 | 2027-02-26 | 2027-01-20 | 2027-02-26 |  |
| 107 | 1.5.1 | Magnetometer | 5d | 2027-01-20 | 2027-01-26 | 25, 82 | 2027-01-20 | 2027-01-26 | 2027-01-20 | 2027-01-26 |  |
| 109 | 1.5.2 | Instrument | 15d | 2027-02-08 | 2027-02-26 | 22, 87 | 2027-02-08 | 2027-02-26 | 2027-02-08 | 2027-02-26 |  |
| 111 | 1.5.3 | Link | 10d | 2027-01-27 | 2027-02-09 | 26, 95 | 2027-01-22 | 2027-02-04 | 2027-01-27 | 2027-02-09 |  |
| 113 | 1.5.4 | Flatsat | 20d | 2027-01-20 | 2027-02-16 | 24, 25, 101 | 2027-01-20 | 2027-02-16 | 2027-01-20 | 2027-02-16 |  |
| 115 | 1.6 | **Subsystem Testing** | 35d | 2027-01-27 | 2027-03-16 |  | 2027-01-27 | 2027-03-16 | 2027-01-27 | 2027-03-16 |  |
| 116 | 1.6.1 | Magnetometer | 15d | 2027-01-27 | 2027-02-16 | 107 | 2027-01-27 | 2027-02-16 | 2027-01-27 | 2027-02-16 |  |
| 118 | 1.6.2 | Instrument | 15d | 2027-02-08 | 2027-02-26 | 87 | 2027-02-08 | 2027-02-26 | 2027-02-08 | 2027-02-26 |  |
| 120 | 1.6.3 | Link | 15d | 2027-02-10 | 2027-03-02 | 111 | 2027-02-05 | 2027-02-25 | 2027-02-10 | 2027-03-02 |  |
| 122 | 1.6.4 | Flatsat | 20d | 2027-02-17 | 2027-03-16 | 113 | 2027-02-17 | 2027-03-16 | 2027-02-17 | 2027-03-16 |  |
| 124 | 1.7 | System Integration | 10d | 2027-03-17 | 2027-03-30 | 116, 118, 120, 122 | 2027-03-17 | 2027-04-06 | 2027-03-17 | 2027-03-30 |  |
| 126 | 1.8 | System Test | 10d | 2027-03-31 | 2027-04-13 | 124 | 2027-04-07 | 2027-04-12 | 2027-03-31 | 2027-04-13 |  |
| 127 | 1.9 | Design Review 3 | 10d | 2027-02-15 | 2027-02-26 | 81 | 2027-02-15 | 2027-02-26 | 2027-02-15 | 2027-02-26 | start no earlier than 2027-02-15 |
| 129 | 2 | Project Expo | 0d | 2027-04-15 | 2027-04-15 | 1 |  |  | 2027-04-15 | 2027-04-15 | start no earlier than 2027-04-15 |
| 131 | 3 | Design Review 4 | 10d | 2027-04-14 | 2027-04-27 | 1 |  |  | 2027-04-14 | 2027-04-27 | start no earlier than 2027-04-12 |
| 133 | 4 | Hardware Breakdown | 8d | 2027-04-15 | 2027-04-26 | 129 |  |  | 2027-04-15 | 2027-04-26 | start no earlier than 2027-04-01 |
| 135 | 5 | Final Report | 10d | 2027-04-14 | 2027-04-27 | 1 | 2027-04-15 | 2027-04-28 | 2027-04-14 | 2027-04-27 | start no earlier than 2027-04-13 |
